Schedule from MS Project, 2020-10-05 to 2021-06-20, costs in IRR, A marks actual dates.

## Calendars

- Standard: Mon-Thu 08:00-12:00, 13:00-17:00; Fri off; Sat-Sun 08:00-12:00, 13:00-17:00.

## Resources

| Resource | Rate |
| --- | --- |
| مدیر پروژه | 400000 |
| عضو تیم آموزش 1 | 150000 |
| عضو تیم آموزش 2 | 150000 |
| عضو تیم حقوقی 1 | 250000 |
| عضو تیم حقوقی 2 | 250000 |
| عضو تیم برنامه ریزی و تحقیقات 1 | 200000 |
| عضو تیم برنامه ریزی و تحقیقات 2 | 200000 |
| عضو تیم برنامه ریزی و تحقیقات 3 | 200000 |
| عضو تیم برنامه ریزی و تحقیقات 4 | 200000 |
| عضو تیم آنالیز 1 | 160000 |
| عضو تیم آنالیز 2 | 160000 |
| عضو تیم آنالیز 3 | 160000 |
| عضو تیم حسابداری 1 | 220000 |
| عضو تیم حسابداری 2 | 220000 |
| عضو تیم back-end 1 | 170000 |
| عضو تیم back-end 2 | 170000 |
| عضو تیم front-end 1 | 160000 |
| عضو تیم front-end 2 | 160000 |
| طراح ux | 150000 |
| طراح ui | 150000 |
| عضو تیم IOS 1 | 180000 |
| عضو تیم IOS 2 | 180000 |
| عضو تیم Android 1 | 160000 |
| عضو تیم Android 2 | 160000 |

## Schedule

| ID | WBS | Task | Type | Duration | Start | Finish | Predecessors | Complete | Remaining | Baseline start | Baseline finish | Baseline duration | Resources | Work | Actual work | Cost | Baseline cost | Actual cost |
| --- | --- | --- | --- | --- | --- | --- | --- | --- | --- | --- | --- | --- | --- | --- | --- | --- | --- | --- |
| 1 | 1 | **بیمه سفر** |  | 222d | 2020-10-05 A | 2021-06-20 |  | 26% | 163.31d | 2020-10-05 | 2021-06-20 | 222d |  | 11344h | 4440h | 2,138,800,000 | 2,138,800,000 | 897,280,000 |
| 2 | 1.1 | **فاز اول: راه اندازی پروژه** |  | 39d | 2020-10-05 A | 2020-11-18 A |  | 100% |  | 2020-10-05 | 2020-11-18 | 39d |  | 2352h | 2352h | 476,960,000 | 476,960,000 | 476,960,000 |
| 3 | 1.1.1 | **تحقیقات میدانی در مورد ذی‌نفعان** |  | 23d | 2020-10-05 A | 2020-10-31 A |  | 100% |  | 2020-10-05 | 2020-10-31 | 23d |  | 1520h | 1520h | 298,240,000 | 298,240,000 | 298,240,000 |
| 4 | 1.1.1.1 | **مصاحبه با ذی‌نفعان** |  | 17d | 2020-10-05 A | 2020-10-24 A |  | 100% |  | 2020-10-05 | 2020-10-24 | 17d |  | 1184h | 1184h | 241,600,000 | 241,600,000 | 241,600,000 |
| 5 | 1.1.1.1.1 | **مصاحبه با نمایندگان شرکت هواپیمایی** |  | 17d | 2020-10-05 A | 2020-10-24 A |  | 100% |  | 2020-10-05 | 2020-10-24 | 17d |  | 592h | 592h | 120,800,000 | 120,800,000 | 120,800,000 |
| 6 | 1.1.1.1.1.1 | پرسش نیازمندی های شرکت هواپیمایی در مورد برنامه |  | 14d | 2020-10-05 A | 2020-10-20 A |  | 100% |  | 2020-10-05 | 2020-10-20 | 14d | عضو تیم برنامه ریزی و تحقیقات 1; عضو تیم برنامه ریزی و تحقیقات 2; عضو تیم برنامه ریزی و تحقیقات 3; عضو تیم برنامه ریزی و تحقیقات 4 | 448h | 448h | 89,600,000 | 89,600,000 | 89,600,000 |
| 7 | 1.1.1.1.1.2 | مستند سازی نتایج |  | 3d | 2020-10-21 A | 2020-10-24 A | 6 | 100% |  | 2020-10-21 | 2020-10-24 | 3d | عضو تیم برنامه ریزی و تحقیقات 1; عضو تیم برنامه ریزی و تحقیقات 2; عضو تیم برنامه ریزی و تحقیقات 3; عضو تیم برنامه ریزی و تحقیقات 4; عضو تیم حقوقی 1; عضو تیم حقوقی 2 | 144h | 144h | 31,200,000 | 31,200,000 | 31,200,000 |
| 8 | 1.1.1.1.2 | **مصاحبه با نمایندگان شرکت بیمه** |  | 17d | 2020-10-05 A | 2020-10-24 A |  | 100% |  | 2020-10-05 | 2020-10-24 | 17d |  | 592h | 592h | 120,800,000 | 120,800,000 | 120,800,000 |
| 9 | 1.1.1.1.2.1 | پرسش نیازمندی های شرکت بیمه در مورد برنامه |  | 14d | 2020-10-05 A | 2020-10-20 A |  | 100% |  | 2020-10-05 | 2020-10-20 | 14d | عضو تیم برنامه ریزی و تحقیقات 1; عضو تیم برنامه ریزی و تحقیقات 2; عضو تیم برنامه ریزی و تحقیقات 3; عضو تیم برنامه ریزی و تحقیقات 4 | 448h | 448h | 89,600,000 | 89,600,000 | 89,600,000 |
| 10 | 1.1.1.1.2.2 | مستند سازی نتایج |  | 3d | 2020-10-21 A | 2020-10-24 A | 9 | 100% |  | 2020-10-21 | 2020-10-24 | 3d | عضو تیم برنامه ریزی و تحقیقات 1; عضو تیم برنامه ریزی و تحقیقات 2; عضو تیم برنامه ریزی و تحقیقات 3; عضو تیم برنامه ریزی و تحقیقات 4; عضو تیم حقوقی 1; عضو تیم حقوقی 2 | 144h | 144h | 31,200,000 | 31,200,000 | 31,200,000 |
| 11 | 1.1.1.2 | نظرسنجی اینترنتی از کاربران احتمالی برنامه |  | 14d | 2020-10-05 A | 2020-10-20 A |  | 100% |  | 2020-10-05 | 2020-10-20 | 14d | عضو تیم آنالیز 1 | 112h | 112h | 17,920,000 | 17,920,000 | 17,920,000 |
| 12 | 1.1.1.3 | **آنالیز ذی‌نفعان** |  | 6d | 2020-10-25 A | 2020-10-31 A |  | 100% |  | 2020-10-25 | 2020-10-31 | 6d |  | 224h | 224h | 38,720,000 | 38,720,000 | 38,720,000 |
| 13 | 1.1.1.3.1 | تقسیم بندی ذینفعان |  | 2d | 2020-10-25 A | 2020-10-26 A | 4 | 100% |  | 2020-10-25 | 2020-10-26 | 2d | عضو تیم آنالیز 1; عضو تیم آنالیز 2; عضو تیم آنالیز 3 | 48h | 48h | 7,680,000 | 7,680,000 | 7,680,000 |
| 14 | 1.1.1.3.2 | بررسی ذینفعان از نظر قدرت |  | 2d | 2020-10-27 A | 2020-10-28 A | 13 | 100% |  | 2020-10-27 | 2020-10-28 | 2d | عضو تیم آنالیز 1; عضو تیم آنالیز 2; عضو تیم آنالیز 3; عضو تیم حقوقی 1 | 64h | 64h | 11,680,000 | 11,680,000 | 11,680,000 |
| 15 | 1.1.1.3.3 | بررسی ذینفعان از نظر علایق |  | 2d | 2020-10-27 A | 2020-10-28 A | 13 | 100% |  | 2020-10-27 | 2020-10-28 | 2d | عضو تیم آنالیز 1; عضو تیم آنالیز 2; عضو تیم آنالیز 3; عضو تیم حقوقی 2 | 64h | 64h | 11,680,000 | 11,680,000 | 11,680,000 |
| 16 | 1.1.1.3.4 | مستند سازی نتایج و رسم نمودار Power/Interest |  | 2d | 2020-10-29 A | 2020-10-31 A | 14, 15 | 100% |  | 2020-10-29 | 2020-10-31 | 2d | عضو تیم آنالیز 1; عضو تیم آنالیز 2; عضو تیم آنالیز 3 | 48h | 48h | 7,680,000 | 7,680,000 | 7,680,000 |
| 17 | 1.1.1.4 | بررسی نهایی تحقیقات میدانی | milestone | 0d | 2020-10-31 A | 2020-10-31 A | 12 | 100% |  | 2020-10-31 | 2020-10-31 | 0d | عضو تیم آنالیز 1; عضو تیم آنالیز 2; عضو تیم آنالیز 3; عضو تیم حقوقی 1; عضو تیم حقوقی 2; مدیر پروژه |  |  |  |  |  |
| 18 | 1.1.2 | **برنامه‌ی ابتدایی پیاده سازی** |  | 16d | 2020-11-01 A | 2020-11-18 A |  | 100% |  | 2020-11-01 | 2020-11-18 | 16d |  | 832h | 832h | 178,720,000 | 178,720,000 | 178,720,000 |
| 19 | 1.1.2.1 | انتخاب پروسه های انجام کار |  | 2d | 2020-11-01 A | 2020-11-02 A | 3 | 100% |  | 2020-11-01 | 2020-11-02 | 2d | عضو تیم برنامه ریزی و تحقیقات 1; عضو تیم برنامه ریزی و تحقیقات 2; عضو تیم برنامه ریزی و تحقیقات 3; عضو تیم برنامه ریزی و تحقیقات 4; مدیر پروژه | 80h | 80h | 19,200,000 | 19,200,000 | 19,200,000 |
| 20 | 1.1.2.2 | **مستند سازی مسائل مربوط به مدیریت پروژه** |  | 12d | 2020-11-03 A | 2020-11-16 A | 19 | 100% |  | 2020-11-03 | 2020-11-16 | 12d |  | 688h | 688h | 146,720,000 | 146,720,000 | 146,720,000 |
| 21 | 1.1.2.2.1 | رسم چارتر پروژه |  | 1d | 2020-11-03 A | 2020-11-03 A |  | 100% |  | 2020-11-03 | 2020-11-03 | 1d | عضو تیم برنامه ریزی و تحقیقات 1; عضو تیم برنامه ریزی و تحقیقات 2; عضو تیم برنامه ریزی و تحقیقات 3; عضو تیم برنامه ریزی و تحقیقات 4 | 32h | 32h | 6,400,000 | 6,400,000 | 6,400,000 |
| 22 | 1.1.2.2.2 | تعریف scope پروژه |  | 2d | 2020-11-03 A | 2020-11-04 A |  | 100% |  | 2020-11-03 | 2020-11-04 | 2d | عضو تیم برنامه ریزی و تحقیقات 1; عضو تیم برنامه ریزی و تحقیقات 2; عضو تیم برنامه ریزی و تحقیقات 3; عضو تیم برنامه ریزی و تحقیقات 4 | 64h | 64h | 12,800,000 | 12,800,000 | 12,800,000 |
| 23 | 1.1.2.2.3 | برنامه ابتدایی پروژه |  | 3d | 2020-11-05 A | 2020-11-08 A | 22 | 100% |  | 2020-11-05 | 2020-11-08 | 3d | عضو تیم برنامه ریزی و تحقیقات 1; عضو تیم برنامه ریزی و تحقیقات 2; عضو تیم برنامه ریزی و تحقیقات 3; عضو تیم برنامه ریزی و تحقیقات 4; مدیر پروژه; عضو تیم حسابداری 1; عضو تیم حسابداری 2 | 168h | 168h | 39,360,000 | 39,360,000 | 39,360,000 |
| 24 | 1.1.2.2.4 | ریسک سنجی پروژه |  | 7d | 2020-11-09 A | 2020-11-16 A | 23 | 100% |  | 2020-11-09 | 2020-11-16 | 7d | عضو تیم آنالیز 1; عضو تیم برنامه ریزی و تحقیقات 1; عضو تیم برنامه ریزی و تحقیقات 2; عضو تیم برنامه ریزی و تحقیقات 3; عضو تیم برنامه ریزی و تحقیقات 4; عضو تیم حقوقی 1; عضو تیم حقوقی 2 | 392h | 392h | 81,760,000 | 81,760,000 | 81,760,000 |
| 25 | 1.1.2.2.5 | تعیین استراتژی ارتباطی اولیه |  | 1d | 2020-11-09 A | 2020-11-09 A | 23 | 100% |  | 2020-11-09 | 2020-11-09 | 1d | عضو تیم برنامه ریزی و تحقیقات 1; عضو تیم برنامه ریزی و تحقیقات 2; عضو تیم برنامه ریزی و تحقیقات 3; عضو تیم برنامه ریزی و تحقیقات 4 | 32h | 32h | 6,400,000 | 6,400,000 | 6,400,000 |
| 26 | 1.1.2.3 | تعیین شاخص های کلیدی عملکرد |  | 1d | 2020-11-17 A | 2020-11-17 A | 20 | 100% |  | 2020-11-17 | 2020-11-17 | 1d | عضو تیم برنامه ریزی و تحقیقات 1; عضو تیم برنامه ریزی و تحقیقات 2; عضو تیم برنامه ریزی و تحقیقات 3; عضو تیم برنامه ریزی و تحقیقات 4 | 32h | 32h | 6,400,000 | 6,400,000 | 6,400,000 |
| 27 | 1.1.2.4 | نوشتن Business Case اولیه |  | 1d | 2020-11-18 A | 2020-11-18 A | 26 | 100% |  | 2020-11-18 | 2020-11-18 | 1d | عضو تیم برنامه ریزی و تحقیقات 1; عضو تیم برنامه ریزی و تحقیقات 2; عضو تیم برنامه ریزی و تحقیقات 3; عضو تیم برنامه ریزی و تحقیقات 4 | 32h | 32h | 6,400,000 | 6,400,000 | 6,400,000 |
| 28 | 1.1.2.5 | جلسه برنامه ابتدایی پیاده سازی | milestone | 0d | 2020-11-18 A | 2020-11-18 A | 27 | 100% |  | 2020-11-18 | 2020-11-18 | 0d | عضو تیم برنامه ریزی و تحقیقات 1; عضو تیم برنامه ریزی و تحقیقات 2; عضو تیم برنامه ریزی و تحقیقات 3; عضو تیم برنامه ریزی و تحقیقات 4; عضو تیم حسابداری 1; عضو تیم حسابداری 2; مدیر پروژه |  |  |  |  |  |

| ID | WBS | Task | Duration | Start | Finish | Predecessors | Complete | Remaining | Baseline start | Baseline finish | Baseline duration | Total slack | Resources | Work | Actual work | Cost | Baseline cost | Actual cost |
| --- | --- | --- | --- | --- | --- | --- | --- | --- | --- | --- | --- | --- | --- | --- | --- | --- | --- | --- |
| 29 | 1.2 | **فاز دوم: طراحی** | 7d | 2020-11-19 A | 2020-11-26 A | 2 | 100% |  | 2020-11-19 | 2020-11-26 | 7d |  |  | 1120h | 1120h | 224,640,000 | 224,640,000 | 224,640,000 |
| 30 | 1.2.1 | جلسه Brainstorming | 1d | 2020-11-19 A | 2020-11-19 A |  | 100% |  | 2020-11-19 | 2020-11-19 | 1d |  | عضو تیم برنامه ریزی و تحقیقات 1; عضو تیم برنامه ریزی و تحقیقات 2; عضو تیم برنامه ریزی و تحقیقات 3; عضو تیم برنامه ریزی و تحقیقات 4 | 32h | 32h | 6,400,000 | 6,400,000 | 6,400,000 |
| 31 | 1.2.2 | بررسی مدل های پروسه های As-is | 1d | 2020-11-19 A | 2020-11-19 A |  | 100% |  | 2020-11-19 | 2020-11-19 | 1d |  | عضو تیم برنامه ریزی و تحقیقات 1; عضو تیم برنامه ریزی و تحقیقات 2; عضو تیم برنامه ریزی و تحقیقات 3; عضو تیم برنامه ریزی و تحقیقات 4 | 32h | 32h | 6,400,000 | 6,400,000 | 6,400,000 |
| 32 | 1.2.3 | **بررسی عملکرد پروسه های As-is** | 6d | 2020-11-19 A | 2020-11-25 A |  | 100% |  | 2020-11-19 | 2020-11-25 | 6d |  |  | 896h | 896h | 179,200,000 | 179,200,000 | 179,200,000 |
| 33 | 1.2.3.1 | **بررسی پروسه ها با متریک های مالی** | 4d | 2020-11-19 A | 2020-11-23 A |  | 100% |  | 2020-11-19 | 2020-11-23 | 4d |  |  | 416h | 416h | 83,200,000 | 83,200,000 | 83,200,000 |
| 34 | 1.2.3.1.1 | اندازه گیری ROI | 1d | 2020-11-19 A | 2020-11-19 A |  | 100% |  | 2020-11-19 | 2020-11-19 | 1d |  | عضو تیم برنامه ریزی و تحقیقات 1; عضو تیم برنامه ریزی و تحقیقات 2; عضو تیم برنامه ریزی و تحقیقات 3; عضو تیم برنامه ریزی و تحقیقات 4 | 32h | 32h | 6,400,000 | 6,400,000 | 6,400,000 |
| 35 | 1.2.3.1.2 | اندازه گیری Profit | 3d | 2020-11-19 A | 2020-11-22 A |  | 100% |  | 2020-11-19 | 2020-11-22 | 3d |  | عضو تیم برنامه ریزی و تحقیقات 1; عضو تیم برنامه ریزی و تحقیقات 2; عضو تیم برنامه ریزی و تحقیقات 3; عضو تیم برنامه ریزی و تحقیقات 4 | 96h | 96h | 19,200,000 | 19,200,000 | 19,200,000 |
| 36 | 1.2.3.1.3 | اندازه گیری Market share | 3d | 2020-11-19 A | 2020-11-22 A |  | 100% |  | 2020-11-19 | 2020-11-22 | 3d |  | عضو تیم برنامه ریزی و تحقیقات 1; عضو تیم برنامه ریزی و تحقیقات 2; عضو تیم برنامه ریزی و تحقیقات 3; عضو تیم برنامه ریزی و تحقیقات 4 | 96h | 96h | 19,200,000 | 19,200,000 | 19,200,000 |
| 37 | 1.2.3.1.4 | اندازه گیری Earning Growth | 2d | 2020-11-19 A | 2020-11-21 A |  | 100% |  | 2020-11-19 | 2020-11-21 | 2d |  | عضو تیم برنامه ریزی و تحقیقات 1; عضو تیم برنامه ریزی و تحقیقات 2; عضو تیم برنامه ریزی و تحقیقات 3; عضو تیم برنامه ریزی و تحقیقات 4 | 64h | 64h | 12,800,000 | 12,800,000 | 12,800,000 |
| 38 | 1.2.3.1.5 | اندازه گیری Stock Price | 4d | 2020-11-19 A | 2020-11-23 A |  | 100% |  | 2020-11-19 | 2020-11-23 | 4d |  | عضو تیم برنامه ریزی و تحقیقات 1; عضو تیم برنامه ریزی و تحقیقات 2; عضو تیم برنامه ریزی و تحقیقات 3; عضو تیم برنامه ریزی و تحقیقات 4 | 128h | 128h | 25,600,000 | 25,600,000 | 25,600,000 |
| 39 | 1.2.3.2 | **بررسی پروسه ها با متریک های غیر مالی** | 6d | 2020-11-19 A | 2020-11-25 A |  | 100% |  | 2020-11-19 | 2020-11-25 | 6d |  |  | 480h | 480h | 96,000,000 | 96,000,000 | 96,000,000 |
| 40 | 1.2.3.2.1 | وضعیت Customer Satisfaction | 5d | 2020-11-19 A | 2020-11-24 A |  | 100% |  | 2020-11-19 | 2020-11-24 | 5d |  | عضو تیم برنامه ریزی و تحقیقات 1; عضو تیم برنامه ریزی و تحقیقات 2; عضو تیم برنامه ریزی و تحقیقات 3; عضو تیم برنامه ریزی و تحقیقات 4 | 160h | 160h | 32,000,000 | 32,000,000 | 32,000,000 |
| 41 | 1.2.3.2.2 | وضعیت Process Excellence | 4d | 2020-11-19 A | 2020-11-23 A |  | 100% |  | 2020-11-19 | 2020-11-23 | 4d |  | عضو تیم برنامه ریزی و تحقیقات 1; عضو تیم برنامه ریزی و تحقیقات 2; عضو تیم برنامه ریزی و تحقیقات 3; عضو تیم برنامه ریزی و تحقیقات 4 | 128h | 128h | 25,600,000 | 25,600,000 | 25,600,000 |
| 42 | 1.2.3.2.3 | وضعیت Employee Satisfaction | 6d | 2020-11-19 A | 2020-11-25 A |  | 100% |  | 2020-11-19 | 2020-11-25 | 6d |  | عضو تیم برنامه ریزی و تحقیقات 1; عضو تیم برنامه ریزی و تحقیقات 2; عضو تیم برنامه ریزی و تحقیقات 3; عضو تیم برنامه ریزی و تحقیقات 4 | 192h | 192h | 38,400,000 | 38,400,000 | 38,400,000 |
| 43 | 1.2.4 | مشخص کردن استراتژی های quick win | 3d | 2020-11-19 A | 2020-11-22 A |  | 100% |  | 2020-11-19 | 2020-11-22 | 3d |  | عضو تیم برنامه ریزی و تحقیقات 1; عضو تیم برنامه ریزی و تحقیقات 2; عضو تیم برنامه ریزی و تحقیقات 3; عضو تیم برنامه ریزی و تحقیقات 4 | 96h | 96h | 19,200,000 | 19,200,000 | 19,200,000 |
| 44 | 1.2.5 | مستند سازی نتایج | 1d | 2020-11-26 A | 2020-11-26 A | 31, 32, 43 | 100% |  | 2020-11-26 | 2020-11-26 | 1d |  | عضو تیم آنالیز 1; عضو تیم آنالیز 2; عضو تیم آنالیز 3; عضو تیم برنامه ریزی و تحقیقات 1; عضو تیم برنامه ریزی و تحقیقات 2; عضو تیم برنامه ریزی و تحقیقات 3; عضو تیم برنامه ریزی و تحقیقات 4; مدیر پروژه | 64h | 64h | 13,440,000 | 13,440,000 | 13,440,000 |
| 45 | 1.3 | **فاز سوم: مدل سازی** | 63d | 2020-11-28 A | 2021-02-08 | 29 | 58% | 26.33d | 2020-11-28 | 2021-02-08 | 63d | 0d |  | 1920h | 968h | 397,760,000 | 397,760,000 | 195,680,000 |
| 46 | 1.3.1 | **تهیه Communication Plan ذی‌نفعان پروژه** | 27d | 2020-11-28 A | 2020-12-28 A |  | 100% |  | 2020-11-28 | 2020-12-28 | 27d |  |  | 624h | 624h | 121,600,000 | 121,600,000 | 121,600,000 |
| 47 | 1.3.1.1 | **آنالیز شرایط فعلی** | 17d | 2020-11-28 A | 2020-12-16 A |  | 100% |  | 2020-11-28 | 2020-12-16 | 17d |  |  | 208h | 208h | 37,120,000 | 37,120,000 | 37,120,000 |
| 48 | 1.3.1.1.1 | جلسات Brainstorming | 1d | 2020-11-28 A | 2020-11-28 A |  | 100% |  | 2020-11-28 | 2020-11-28 | 1d |  | عضو تیم برنامه ریزی و تحقیقات 1; عضو تیم برنامه ریزی و تحقیقات 2; عضو تیم برنامه ریزی و تحقیقات 3; عضو تیم برنامه ریزی و تحقیقات 4 | 32h | 32h | 6,400,000 | 6,400,000 | 6,400,000 |
| 49 | 1.3.1.1.2 | انجام نظرسنجی | 14d | 2020-11-29 A | 2020-12-14 A | 48 | 100% |  | 2020-11-29 | 2020-12-14 | 14d |  | عضو تیم آنالیز 3 | 112h | 112h | 17,920,000 | 17,920,000 | 17,920,000 |
| 50 | 1.3.1.1.3 | برگزاری جلسات با دپارتمان های مربوطه | 2d | 2020-12-15 A | 2020-12-16 A | 49 | 100% |  | 2020-12-15 | 2020-12-16 | 2d |  | عضو تیم برنامه ریزی و تحقیقات 1; عضو تیم برنامه ریزی و تحقیقات 2; عضو تیم برنامه ریزی و تحقیقات 3; عضو تیم برنامه ریزی و تحقیقات 4 | 64h | 64h | 12,800,000 | 12,800,000 | 12,800,000 |
| 51 | 1.3.1.2 | تعیین اهداف | 2d | 2020-12-17 A | 2020-12-19 A | 47 | 100% |  | 2020-12-17 | 2020-12-19 | 2d |  | عضو تیم برنامه ریزی و تحقیقات 1; عضو تیم برنامه ریزی و تحقیقات 2; عضو تیم برنامه ریزی و تحقیقات 3; عضو تیم برنامه ریزی و تحقیقات 4 | 64h | 64h | 12,800,000 | 12,800,000 | 12,800,000 |
| 52 | 1.3.1.3 | مشخص کردن مخاطبان اصلی | 1d | 2020-12-20 A | 2020-12-20 A | 51 | 100% |  | 2020-12-20 | 2020-12-20 | 1d |  | عضو تیم برنامه ریزی و تحقیقات 1; عضو تیم برنامه ریزی و تحقیقات 2; عضو تیم برنامه ریزی و تحقیقات 3; عضو تیم برنامه ریزی و تحقیقات 4 | 32h | 32h | 6,400,000 | 6,400,000 | 6,400,000 |
| 53 | 1.3.1.4 | مشخص کردن راه‌های ارتباطی با مخاطبان | 1d | 2020-12-20 A | 2020-12-20 A | 51 | 100% |  | 2020-12-20 | 2020-12-20 | 1d |  | عضو تیم برنامه ریزی و تحقیقات 1; عضو تیم برنامه ریزی و تحقیقات 2; عضو تیم برنامه ریزی و تحقیقات 3; عضو تیم برنامه ریزی و تحقیقات 4 | 32h | 32h | 6,400,000 | 6,400,000 | 6,400,000 |
| 54 | 1.3.1.5 | نوشتن یک Timetable | 3d | 2020-12-21 A | 2020-12-23 A | 53 | 100% |  | 2020-12-21 | 2020-12-23 | 3d |  | عضو تیم برنامه ریزی و تحقیقات 1; عضو تیم برنامه ریزی و تحقیقات 2; عضو تیم برنامه ریزی و تحقیقات 3; عضو تیم برنامه ریزی و تحقیقات 4 | 96h | 96h | 19,200,000 | 19,200,000 | 19,200,000 |
| 55 | 1.3.1.6 | ارزیابی نتایج | 2d | 2020-12-24 A | 2020-12-26 A | 54 | 100% |  | 2020-12-24 | 2020-12-26 | 2d |  | عضو تیم برنامه ریزی و تحقیقات 1; عضو تیم برنامه ریزی و تحقیقات 2; عضو تیم برنامه ریزی و تحقیقات 3; عضو تیم برنامه ریزی و تحقیقات 4 | 64h | 64h | 12,800,000 | 12,800,000 | 12,800,000 |
| 56 | 1.3.1.7 | مستند سازی نتایج | 2d | 2020-12-27 A | 2020-12-28 A | 55 | 100% |  | 2020-12-27 | 2020-12-28 | 2d |  | عضو تیم آنالیز 1; عضو تیم آنالیز 2; عضو تیم آنالیز 3; عضو تیم برنامه ریزی و تحقیقات 1; عضو تیم برنامه ریزی و تحقیقات 2; عضو تیم برنامه ریزی و تحقیقات 3; عضو تیم برنامه ریزی و تحقیقات 4; مدیر پروژه | 128h | 128h | 26,880,000 | 26,880,000 | 26,880,000 |

| ID | WBS | Task | Duration | Start | Finish | Predecessors | Complete | Remaining | Baseline start | Baseline finish | Baseline duration | Total slack | Resources | Work | Actual work | Cost | Baseline cost | Actual cost |
| --- | --- | --- | --- | --- | --- | --- | --- | --- | --- | --- | --- | --- | --- | --- | --- | --- | --- | --- |
| 57 | 1.3.2 | **آماده سازی Project Plan برای فاز اجرا** | 24d | 2020-12-29 A | 2021-01-25 | 46 | 44% | 13.44d | 2020-12-29 | 2021-01-25 | 24d | 0d |  | 848h | 344h | 186,560,000 | 186,560,000 | 74,080,000 |
| 58 | 1.3.2.1 | **جلسه با حضور ذی‌نفعان** | 6d | 2020-12-29 A | 2021-01-04 A |  | 100% |  | 2020-12-29 | 2021-01-04 | 6d |  |  | 176h | 176h | 36,000,000 | 36,000,000 | 36,000,000 |
| 59 | 1.3.2.1.1 | توضیح اهداف پروژه به ذی‌نفعان کلیدی | 2d | 2020-12-29 A | 2020-12-30 A |  | 100% |  | 2020-12-29 | 2020-12-30 | 2d |  | عضو تیم برنامه ریزی و تحقیقات 3; عضو تیم برنامه ریزی و تحقیقات 4; عضو تیم حقوقی 1 | 48h | 48h | 10,400,000 | 10,400,000 | 10,400,000 |
| 60 | 1.3.2.1.2 | لیست کردن و یک راستا سازی اهداف نهایی | 4d | 2020-12-31 A | 2021-01-04 A | 59 | 100% |  | 2020-12-31 | 2021-01-04 | 4d |  | عضو تیم برنامه ریزی و تحقیقات 1; عضو تیم برنامه ریزی و تحقیقات 2; عضو تیم برنامه ریزی و تحقیقات 3; عضو تیم برنامه ریزی و تحقیقات 4 | 128h | 128h | 25,600,000 | 25,600,000 | 25,600,000 |
| 61 | 1.3.2.2 | جلسه Brainstorming | 1d | 2020-12-29 A | 2020-12-29 A |  | 100% |  | 2020-12-29 | 2020-12-29 | 1d |  | عضو تیم برنامه ریزی و تحقیقات 1; عضو تیم برنامه ریزی و تحقیقات 2; عضو تیم برنامه ریزی و تحقیقات 3; عضو تیم برنامه ریزی و تحقیقات 4 | 32h | 32h | 6,400,000 | 6,400,000 | 6,400,000 |
| 62 | 1.3.2.3 | آپدیت کردن Project Scope در صورت نیاز | 1d | 2021-01-05 A | 2021-01-05 A | 58 | 100% |  | 2021-01-05 | 2021-01-05 | 1d |  | عضو تیم آنالیز 1; عضو تیم برنامه ریزی و تحقیقات 3 | 16h | 16h | 2,880,000 | 2,880,000 | 2,880,000 |
| 63 | 1.3.2.4 | **تهیه Schedule زمانی** | 5d | 2021-01-06 A | 2021-01-11 | 62 | 60% | 2d | 2021-01-06 | 2021-01-11 | 5d | 0d |  | 184h | 120h | 41,600,000 | 41,600,000 | 28,800,000 |
| 64 | 1.3.2.4.1 | مشخص کردن Taskهای پروژه | 3d | 2021-01-06 A | 2021-01-09 A |  | 100% |  | 2021-01-06 | 2021-01-09 | 3d |  | عضو تیم برنامه ریزی و تحقیقات 1; عضو تیم برنامه ریزی و تحقیقات 2; عضو تیم برنامه ریزی و تحقیقات 3; عضو تیم برنامه ریزی و تحقیقات 4; مدیر پروژه | 120h | 120h | 28,800,000 | 28,800,000 | 28,800,000 |
| 65 | 1.3.2.4.2 | مشخص کردن Subtask های هر Task | 1d | 2021-01-10 | 2021-01-10 | 64 |  |  | 2021-01-10 | 2021-01-10 | 1d | 0d | عضو تیم برنامه ریزی و تحقیقات 1; عضو تیم برنامه ریزی و تحقیقات 2; عضو تیم برنامه ریزی و تحقیقات 3; عضو تیم برنامه ریزی و تحقیقات 4 | 32h |  | 6,400,000 | 6,400,000 |  |
| 66 | 1.3.2.4.3 | تعیین Milestone ها | 1d | 2021-01-11 | 2021-01-11 | 65 |  |  | 2021-01-11 | 2021-01-11 | 1d | 0d | عضو تیم برنامه ریزی و تحقیقات 1; عضو تیم برنامه ریزی و تحقیقات 2; عضو تیم برنامه ریزی و تحقیقات 3; عضو تیم برنامه ریزی و تحقیقات 4 | 32h |  | 6,400,000 | 6,400,000 |  |
| 67 | 1.3.2.5 | تعیین منابع و نقش ها و وظایف | 4d | 2021-01-12 | 2021-01-16 | 66 |  |  | 2021-01-12 | 2021-01-16 | 4d | 0d | عضو تیم برنامه ریزی و تحقیقات 1; عضو تیم برنامه ریزی و تحقیقات 2; عضو تیم برنامه ریزی و تحقیقات 3; عضو تیم برنامه ریزی و تحقیقات 4; عضو تیم حسابداری 1; عضو تیم حسابداری 2; عضو تیم حقوقی 2; مدیر پروژه | 256h |  | 60,480,000 | 60,480,000 |  |
| 68 | 1.3.2.6 | آپدیت کردن Communication Plan در صورت نیاز | 1d | 2021-01-17 | 2021-01-17 | 67 |  |  | 2021-01-17 | 2021-01-17 | 1d | 0d | عضو تیم برنامه ریزی و تحقیقات 2 | 8h |  | 1,600,000 | 1,600,000 |  |
| 69 | 1.3.2.7 | بررسی استراتژی های احتمالی در صورت تحقق ریسک های پروژه | 4d | 2021-01-18 | 2021-01-21 | 68 |  |  | 2021-01-18 | 2021-01-21 | 4d | 0d | عضو تیم برنامه ریزی و تحقیقات 3; عضو تیم برنامه ریزی و تحقیقات 4; عضو تیم حقوقی 1 | 96h |  | 20,800,000 | 20,800,000 |  |
| 70 | 1.3.2.8 | جلسه‌ی اشتراک گذاری نتایج و توافق نهایی با ذی‌نفعان | 1d | 2021-01-23 | 2021-01-23 | 69 |  |  | 2021-01-23 | 2021-01-23 | 1d | 0d | عضو تیم برنامه ریزی و تحقیقات 1; عضو تیم برنامه ریزی و تحقیقات 2; عضو تیم برنامه ریزی و تحقیقات 3; عضو تیم برنامه ریزی و تحقیقات 4; عضو تیم حقوقی 1; عضو تیم حقوقی 2 | 48h |  | 10,400,000 | 10,400,000 |  |
| 71 | 1.3.2.9 | مستند سازی توافقات | 2d | 2021-01-24 | 2021-01-25 | 70 |  |  | 2021-01-24 | 2021-01-25 | 2d | 0d | عضو تیم برنامه ریزی و تحقیقات 3; عضو تیم برنامه ریزی و تحقیقات 4 | 32h |  | 6,400,000 | 6,400,000 |  |
| 72 | 1.3.3 | **آپدیت کردن Business Case** | 4d | 2021-01-26 | 2021-01-30 | 57 |  |  | 2021-01-26 | 2021-01-30 | 4d | 0d |  | 128h |  | 25,600,000 | 25,600,000 |  |
| 73 | 1.3.3.1 | بررسی benefit/cost پروسه های to-be | 4d | 2021-01-26 | 2021-01-30 |  |  |  | 2021-01-26 | 2021-01-30 | 4d | 0d | عضو تیم برنامه ریزی و تحقیقات 1; عضو تیم برنامه ریزی و تحقیقات 2; عضو تیم برنامه ریزی و تحقیقات 3; عضو تیم برنامه ریزی و تحقیقات 4 | 128h |  | 25,600,000 | 25,600,000 |  |
| 74 | 1.3.4 | **طراحی مجدد مدل های فرایند** | 8d | 2021-01-31 | 2021-02-08 | 72 |  |  | 2021-01-31 | 2021-02-08 | 8d | 0d |  | 320h |  | 64,000,000 | 64,000,000 |  |
| 75 | 1.3.4.1 | جلسه Brainstorming | 1d | 2021-01-31 | 2021-01-31 |  |  |  | 2021-01-31 | 2021-01-31 | 1d | 0d | عضو تیم برنامه ریزی و تحقیقات 1; عضو تیم برنامه ریزی و تحقیقات 2; عضو تیم برنامه ریزی و تحقیقات 3; عضو تیم برنامه ریزی و تحقیقات 4 | 32h |  | 6,400,000 | 6,400,000 |  |
| 76 | 1.3.4.2 | ساختن مدل های فرایند | 4d | 2021-02-01 | 2021-02-04 | 75 |  |  | 2021-02-01 | 2021-02-04 | 4d | 0d | عضو تیم برنامه ریزی و تحقیقات 1; عضو تیم برنامه ریزی و تحقیقات 2; عضو تیم برنامه ریزی و تحقیقات 3; عضو تیم برنامه ریزی و تحقیقات 4 | 128h |  | 25,600,000 | 25,600,000 |  |
| 77 | 1.3.4.3 | **مستند سازی مدل های فرایند** | 1d | 2021-02-06 | 2021-02-06 | 76 |  |  | 2021-02-06 | 2021-02-06 | 1d | 0d |  | 64h |  | 12,800,000 | 12,800,000 |  |
| 78 | 1.3.4.3.1 | فرایند Gap Analysis | 1d | 2021-02-06 | 2021-02-06 |  |  |  | 2021-02-06 | 2021-02-06 | 1d | 0d | عضو تیم برنامه ریزی و تحقیقات 1; عضو تیم برنامه ریزی و تحقیقات 2; عضو تیم برنامه ریزی و تحقیقات 3; عضو تیم برنامه ریزی و تحقیقات 4 | 32h |  | 6,400,000 | 6,400,000 |  |
| 79 | 1.3.4.3.2 | فرایند Capacity Planning | 1d | 2021-02-06 | 2021-02-06 |  |  |  | 2021-02-06 | 2021-02-06 | 1d | 0d | عضو تیم برنامه ریزی و تحقیقات 1; عضو تیم برنامه ریزی و تحقیقات 2; عضو تیم برنامه ریزی و تحقیقات 3; عضو تیم برنامه ریزی و تحقیقات 4 | 32h |  | 6,400,000 | 6,400,000 |  |
| 80 | 1.3.4.4 | مستند سازی نتایج | 1d | 2021-02-07 | 2021-02-07 | 77 |  |  | 2021-02-07 | 2021-02-07 | 1d | 0d | عضو تیم برنامه ریزی و تحقیقات 1; عضو تیم برنامه ریزی و تحقیقات 2; عضو تیم برنامه ریزی و تحقیقات 3; عضو تیم برنامه ریزی و تحقیقات 4 | 32h |  | 6,400,000 | 6,400,000 |  |

| ID | WBS | Task | Duration | Start | Finish | Predecessors | Baseline start | Baseline finish | Baseline duration | Total slack | Resources | Work | Cost | Baseline cost |
| --- | --- | --- | --- | --- | --- | --- | --- | --- | --- | --- | --- | --- | --- | --- |
| 81 | 1.3.4.5 | **تأیید اعتبار فرایند های جدید** | 1d | 2021-02-08 | 2021-02-08 | 80 | 2021-02-08 | 2021-02-08 | 1d | 0d |  | 64h | 12,800,000 | 12,800,000 |
| 82 | 1.3.4.5.1 | تأیید منطبق بودن فرایند ها با انتظارات ذی‌نفعان کلیدی | 1d | 2021-02-08 | 2021-02-08 |  | 2021-02-08 | 2021-02-08 | 1d | 0d | عضو تیم برنامه ریزی و تحقیقات 1; عضو تیم برنامه ریزی و تحقیقات 2; عضو تیم برنامه ریزی و تحقیقات 3; عضو تیم برنامه ریزی و تحقیقات 4 | 32h | 6,400,000 | 6,400,000 |
| 83 | 1.3.4.5.2 | تأیید منطبق بودن مدل ها با متریک های to-be | 1d | 2021-02-08 | 2021-02-08 |  | 2021-02-08 | 2021-02-08 | 1d | 0d | عضو تیم برنامه ریزی و تحقیقات 1; عضو تیم برنامه ریزی و تحقیقات 2; عضو تیم برنامه ریزی و تحقیقات 3; عضو تیم برنامه ریزی و تحقیقات 4 | 32h | 6,400,000 | 6,400,000 |
| 84 | 1.4 | **فاز چهارم: توسعه و اجرا** | 71d | 2021-02-09 | 2021-05-02 | 45 | 2021-02-09 | 2021-05-02 | 71d | 0d |  | 3920h | 684,400,000 | 684,400,000 |
| 85 | 1.4.1 | توسعه یک نگاه سطح بالا در مورد راه حل | 1d | 2021-02-09 | 2021-02-09 |  | 2021-02-09 | 2021-02-09 | 1d | 0d | عضو تیم برنامه ریزی و تحقیقات 1; عضو تیم برنامه ریزی و تحقیقات 2; عضو تیم برنامه ریزی و تحقیقات 3; عضو تیم برنامه ریزی و تحقیقات 4 | 32h | 6,400,000 | 6,400,000 |
| 86 | 1.4.2 | تعیین ادغام سازی های مورد نیاز و نوشتن تست های مد نظر | 1d | 2021-02-09 | 2021-02-09 |  | 2021-02-09 | 2021-02-09 | 1d | 0d | عضو تیم برنامه ریزی و تحقیقات 1; عضو تیم برنامه ریزی و تحقیقات 2; عضو تیم برنامه ریزی و تحقیقات 3; عضو تیم برنامه ریزی و تحقیقات 4 | 32h | 6,400,000 | 6,400,000 |
| 87 | 1.4.3 | **تهیه نرم افزار مبتنی بر وب** | 57d | 2021-02-10 | 2021-04-17 | 85, 86 | 2021-02-10 | 2021-04-17 | 57d | 0d |  | 1496h | 246,080,000 | 246,080,000 |
| 88 | 1.4.3.1 | **Front-end** | 57d | 2021-02-10 | 2021-04-17 |  | 2021-02-10 | 2021-04-17 | 57d | 0d |  | 880h | 139,680,000 | 139,680,000 |
| 89 | 1.4.3.1.1 | **User Experience** | 18d | 2021-02-10 | 2021-03-02 |  | 2021-02-10 | 2021-03-02 | 18d | 0d |  | 256h | 40,240,000 | 40,240,000 |
| 90 | 1.4.3.1.1.1 | بررسی نیاز‌های کاربر و ویژگی های پروژه | 3d | 2021-02-10 | 2021-02-13 |  | 2021-02-10 | 2021-02-13 | 3d | 0d | طراح ui; طراح ux; عضو تیم front-end 1; عضو تیم front-end 2; عضو تیم برنامه ریزی و تحقیقات 1 | 120h | 19,680,000 | 19,680,000 |
| 91 | 1.4.3.1.1.2 | طراحی اولیه UX | 7d | 2021-02-14 | 2021-02-21 | 90 | 2021-02-14 | 2021-02-21 | 7d | 0d | طراح ux | 56h | 8,400,000 | 8,400,000 |
| 92 | 1.4.3.1.1.3 | طراحی transaction ها | 5d | 2021-02-22 | 2021-02-27 | 91 | 2021-02-22 | 2021-02-27 | 5d | 0d | طراح ux | 40h | 6,000,000 | 6,000,000 |
| 93 | 1.4.3.1.1.4 | جلسه هماهنگ سازی UX | 1d | 2021-02-28 | 2021-02-28 | 92 | 2021-02-28 | 2021-02-28 | 1d | 0d | طراح ux; عضو تیم front-end 1; عضو تیم front-end 2 | 24h | 3,760,000 | 3,760,000 |
| 94 | 1.4.3.1.1.5 | نهایی سازی UX | 2d | 2021-03-01 | 2021-03-02 | 93 | 2021-03-01 | 2021-03-02 | 2d | 0d | طراح ux | 16h | 2,400,000 | 2,400,000 |
| 95 | 1.4.3.1.2 | **User Interface** | 22d | 2021-03-03 | 2021-03-28 | 89 | 2021-03-03 | 2021-03-28 | 22d | 0d |  | 336h | 53,360,000 | 53,360,000 |
| 96 | 1.4.3.1.2.1 | بررسی نیاز‌های کاربر و ویژگی های پروژه | 5d | 2021-03-03 | 2021-03-08 |  | 2021-03-03 | 2021-03-08 | 5d | 0d | طراح ui; عضو تیم front-end 1; عضو تیم front-end 2; عضو تیم برنامه ریزی و تحقیقات 4 | 160h | 26,800,000 | 26,800,000 |
| 97 | 1.4.3.1.2.2 | **طراحی اولیه UI** | 7d | 2021-03-09 | 2021-03-16 |  | 2021-03-09 | 2021-03-16 | 7d | 0d |  | 80h | 12,000,000 | 12,000,000 |
| 98 | 1.4.3.1.2.2.1 | ایجاد color-scheme | 3d | 2021-03-09 | 2021-03-11 | 96 | 2021-03-09 | 2021-03-11 | 3d | 14d | طراح ui | 24h | 3,600,000 | 3,600,000 |
| 99 | 1.4.3.1.2.2.2 | انتخاب Typography | 1d | 2021-03-09 | 2021-03-09 | 96 | 2021-03-09 | 2021-03-09 | 1d | 0d | طراح ui | 8h | 1,200,000 | 1,200,000 |
| 100 | 1.4.3.1.2.2.3 | ایجاد Layout مناسب | 6d | 2021-03-10 | 2021-03-16 | 99 | 2021-03-10 | 2021-03-16 | 6d | 0d | طراح ui | 48h | 7,200,000 | 7,200,000 |
| 101 | 1.4.3.1.2.3 | بهینه سازی design element ها | 6d | 2021-03-17 | 2021-03-23 | 100 | 2021-03-17 | 2021-03-23 | 6d | 0d | طراح ui | 48h | 7,200,000 | 7,200,000 |
| 102 | 1.4.3.1.2.4 | جلسه هماهنگ سازی UI | 1d | 2021-03-24 | 2021-03-24 | 101 | 2021-03-24 | 2021-03-24 | 1d | 0d | طراح ui; عضو تیم front-end 1; عضو تیم front-end 2 | 24h | 3,760,000 | 3,760,000 |
| 103 | 1.4.3.1.2.5 | نهایی سازی UI | 3d | 2021-03-25 | 2021-03-28 | 102 | 2021-03-25 | 2021-03-28 | 3d | 0d | طراح ui | 24h | 3,600,000 | 3,600,000 |
| 104 | 1.4.3.1.3 | پیاده سازی Front-end | 14d | 2021-03-29 | 2021-04-13 | 95 | 2021-03-29 | 2021-04-13 | 14d | 0d | عضو تیم front-end 1; عضو تیم front-end 2 | 224h | 35,840,000 | 35,840,000 |
| 105 | 1.4.3.1.4 | تست کردن Front-end | 2d | 2021-04-14 | 2021-04-15 | 104 | 2021-04-14 | 2021-04-15 | 2d | 0d | عضو تیم آنالیز 1; عضو تیم آنالیز 2; عضو تیم آنالیز 3 | 48h | 7,680,000 | 7,680,000 |
| 106 | 1.4.3.1.5 | مستند سازی نتایج تست | 1d | 2021-04-17 | 2021-04-17 | 105 | 2021-04-17 | 2021-04-17 | 1d | 0d | عضو تیم front-end 1; عضو تیم front-end 2 | 16h | 2,560,000 | 2,560,000 |

| ID | WBS | Task | Type | Duration | Start | Finish | Predecessors | Baseline start | Baseline finish | Baseline duration | Total slack | Free slack | Resources | Work | Cost | Baseline cost |
| --- | --- | --- | --- | --- | --- | --- | --- | --- | --- | --- | --- | --- | --- | --- | --- | --- |
| 107 | 1.4.3.2 | **Back-end** |  | 12d | 2021-02-10 | 2021-02-23 |  | 2021-02-10 | 2021-02-23 | 12d | 38d | 0d |  | 408h | 70,080,000 | 70,080,000 |
| 108 | 1.4.3.2.1 | **طراحی دیتابیس** |  | 12d | 2021-02-10 | 2021-02-23 |  | 2021-02-10 | 2021-02-23 | 12d | 38d |  |  | 256h | 43,520,000 | 43,520,000 |
| 109 | 1.4.3.2.1.1 | تعیین ویژگی های دیتابیس |  | 2d | 2021-02-10 | 2021-02-11 |  | 2021-02-10 | 2021-02-11 | 2d | 48d |  | عضو تیم back-end 1; عضو تیم back-end 2; عضو تیم برنامه ریزی و تحقیقات 3 | 48h | 8,640,000 | 8,640,000 |
| 110 | 1.4.3.2.1.2 | انتخاب دیتابیس های relational و non-relatinoal |  | 1d | 2021-02-10 | 2021-02-10 |  | 2021-02-10 | 2021-02-10 | 1d | 38d | 0d | عضو تیم back-end 1; عضو تیم back-end 2 | 16h | 2,720,000 | 2,720,000 |
| 111 | 1.4.3.2.1.3 | طراحی جداول |  | 2d | 2021-02-11 | 2021-02-13 | 110 | 2021-02-11 | 2021-02-13 | 2d | 38d | 0d | عضو تیم back-end 1; عضو تیم back-end 2 | 32h | 5,440,000 | 5,440,000 |
| 112 | 1.4.3.2.1.4 | به دست آوردن ERD | milestone | 0d | 2021-02-13 | 2021-02-13 | 111 | 2021-02-13 | 2021-02-13 | 0d | 38d | 0d | عضو تیم back-end 1; عضو تیم back-end 2 |  |  |  |
| 113 | 1.4.3.2.1.5 | پیاده سازی و بهینه سازی دیتابیس |  | 7d | 2021-02-14 | 2021-02-21 | 112 | 2021-02-14 | 2021-02-21 | 7d | 38d | 0d | عضو تیم back-end 1; عضو تیم back-end 2 | 112h | 19,040,000 | 19,040,000 |
| 114 | 1.4.3.2.1.6 | تست دیتابیس |  | 2d | 2021-02-22 | 2021-02-23 | 113 | 2021-02-22 | 2021-02-23 | 2d | 38d |  | عضو تیم آنالیز 1; عضو تیم آنالیز 2; عضو تیم آنالیز 3 | 48h | 7,680,000 | 7,680,000 |
| 115 | 1.4.3.2.2 | **طراحی API** |  | 5d | 2021-02-10 | 2021-02-15 |  | 2021-02-10 | 2021-02-15 | 5d | 45d |  |  | 152h | 26,560,000 | 26,560,000 |
| 116 | 1.4.3.2.2.1 | بررسی و تعیین نیازمندی ها |  | 2d | 2021-02-10 | 2021-02-11 |  | 2021-02-10 | 2021-02-11 | 2d | 48d |  | عضو تیم back-end 1; عضو تیم back-end 2; عضو تیم برنامه ریزی و تحقیقات 3; عضو تیم برنامه ریزی و تحقیقات 4 | 64h | 11,840,000 | 11,840,000 |
| 117 | 1.4.3.2.2.2 | پیاده سازی Endpoint ها |  | 4d | 2021-02-10 | 2021-02-14 |  | 2021-02-10 | 2021-02-14 | 4d | 45d | 0d | عضو تیم back-end 1; عضو تیم back-end 2 | 64h | 10,880,000 | 10,880,000 |
| 118 | 1.4.3.2.2.3 | تست API |  | 1d | 2021-02-15 | 2021-02-15 | 117 | 2021-02-15 | 2021-02-15 | 1d | 45d |  | عضو تیم آنالیز 1; عضو تیم آنالیز 2; عضو تیم آنالیز 3 | 24h | 3,840,000 | 3,840,000 |
| 119 | 1.4.3.3 | ادغام back-end و front-end |  | 2d | 2021-02-24 | 2021-02-25 | 107 | 2021-02-24 | 2021-02-25 | 2d | 38d | 0d | عضو تیم back-end 1; عضو تیم back-end 2; عضو تیم front-end 1; عضو تیم front-end 2 | 64h | 10,560,000 | 10,560,000 |
| 120 | 1.4.3.4 | تست Front/Back end |  | 2d | 2021-02-27 | 2021-02-28 | 119 | 2021-02-27 | 2021-02-28 | 2d | 38d | 0d | عضو تیم آنالیز 1; عضو تیم آنالیز 2; عضو تیم آنالیز 3 | 48h | 7,680,000 | 7,680,000 |
| 121 | 1.4.3.5 | مستند سازی نتایج تست ها |  | 1d | 2021-03-01 | 2021-03-01 | 120 | 2021-03-01 | 2021-03-01 | 1d | 38d | 0d | عضو تیم back-end 1; عضو تیم back-end 2; عضو تیم front-end 1; عضو تیم front-end 2 | 32h | 5,280,000 | 5,280,000 |
| 122 | 1.4.3.6 | جلسه با ذی‌نفعان و بررسی نتایج |  | 2d | 2021-03-02 | 2021-03-03 | 121 | 2021-03-02 | 2021-03-03 | 2d | 38d | 0d | عضو تیم برنامه ریزی و تحقیقات 1; عضو تیم برنامه ریزی و تحقیقات 2; عضو تیم برنامه ریزی و تحقیقات 3; عضو تیم برنامه ریزی و تحقیقات 4 | 64h | 12,800,000 | 12,800,000 |
| 123 | 1.4.3.7 | بررسی نتیجه نهایی نرم افزار نهایی مبتنی بر وب | milestone | 0d | 2021-03-03 | 2021-03-03 | 122 | 2021-03-03 | 2021-03-03 | 0d | 38d |  | عضو تیم آنالیز 1; عضو تیم آنالیز 2; عضو تیم آنالیز 3; مدیر پروژه |  |  |  |
| 124 | 1.4.4 | **تهیه اپلیکیشن موبایل** |  | 42d | 2021-02-10 | 2021-03-30 | 85, 86 | 2021-02-10 | 2021-03-30 | 42d | 28d |  |  | 1384h | 234,880,000 | 234,880,000 |
| 125 | 1.4.4.1 | **طراحی اپلیکیشن IOS** |  | 42d | 2021-02-10 | 2021-03-30 |  | 2021-02-10 | 2021-03-30 | 42d | 28d |  |  | 672h | 120,960,000 | 120,960,000 |
| 126 | 1.4.4.1.1 | طراحی Swift UI |  | 7d | 2021-02-10 | 2021-02-17 |  | 2021-02-10 | 2021-02-17 | 7d | 28d | 0d | عضو تیم IOS 1; عضو تیم IOS 2 | 112h | 20,160,000 | 20,160,000 |
| 127 | 1.4.4.1.2 | Swift UI پیاده سازی |  | 30d | 2021-02-18 | 2021-03-24 | 126 | 2021-02-18 | 2021-03-24 | 30d | 28d | 0d | عضو تیم IOS 2 | 240h | 43,200,000 | 43,200,000 |
| 128 | 1.4.4.1.3 | پیاده سازی Back-end |  | 30d | 2021-02-18 | 2021-03-24 | 126 | 2021-02-18 | 2021-03-24 | 30d | 28d | 0d | عضو تیم IOS 1 | 240h | 43,200,000 | 43,200,000 |
| 129 | 1.4.4.1.4 | یکپارچه سازی اپلیکشین IOS |  | 5d | 2021-03-25 | 2021-03-30 | 127, 128 | 2021-03-25 | 2021-03-30 | 5d | 28d | 0d | عضو تیم IOS 1; عضو تیم IOS 2 | 80h | 14,400,000 | 14,400,000 |
| 130 | 1.4.4.1.5 | بررسی اپلیکیشن IOS | milestone | 0d | 2021-03-30 | 2021-03-30 | 129 | 2021-03-30 | 2021-03-30 | 0d | 28d |  | عضو تیم آنالیز 1; عضو تیم آنالیز 2; عضو تیم آنالیز 3 |  |  |  |

| ID | WBS | Task | Type | Duration | Start | Finish | Predecessors | Baseline start | Baseline finish | Baseline duration | Total slack | Free slack | Resources | Work | Cost | Baseline cost |
| --- | --- | --- | --- | --- | --- | --- | --- | --- | --- | --- | --- | --- | --- | --- | --- | --- |
| 131 | 1.4.4.2 | **طراحی اپلیکیشن Android** |  | 35d | 2021-02-10 | 2021-03-22 |  | 2021-02-10 | 2021-03-22 | 35d | 35d |  |  | 712h | 113,920,000 | 113,920,000 |
| 132 | 1.4.4.2.1 | طراحی Front-end |  | 7d | 2021-02-10 | 2021-02-17 |  | 2021-02-10 | 2021-02-17 | 7d | 63d |  | عضو تیم Android 1; عضو تیم Android 2 | 112h | 17,920,000 | 17,920,000 |
| 133 | 1.4.4.2.2 | پیاده سازی Front-end |  | 30d | 2021-02-10 | 2021-03-16 |  | 2021-02-10 | 2021-03-16 | 30d | 35d | 0d | عضو تیم Android 1 | 240h | 38,400,000 | 38,400,000 |
| 134 | 1.4.4.2.3 | پیاده سازی Back-end |  | 30d | 2021-02-10 | 2021-03-16 |  | 2021-02-10 | 2021-03-16 | 30d | 35d | 0d | عضو تیم Android 2 | 240h | 38,400,000 | 38,400,000 |
| 135 | 1.4.4.2.4 | یکپارچه سازی اپلیکیشن اندروید |  | 5d | 2021-03-17 | 2021-03-22 | 133, 134 | 2021-03-17 | 2021-03-22 | 5d | 35d | 0d | عضو تیم Android 1; عضو تیم Android 2; عضو تیم front-end 1 | 120h | 19,200,000 | 19,200,000 |
| 136 | 1.4.4.2.5 | بررسی اپلیکیشن اندروید | milestone | 0d | 2021-03-22 | 2021-03-22 | 135 | 2021-03-22 | 2021-03-22 | 0d | 35d |  | عضو تیم آنالیز 1; عضو تیم آنالیز 2; عضو تیم آنالیز 3 |  |  |  |
| 137 | 1.4.5 | **تهیه سخت افزار** |  | 14d | 2021-02-10 | 2021-02-25 | 85, 86 | 2021-02-10 | 2021-02-25 | 14d | 45d | 43d |  | 640h | 134,560,000 | 134,560,000 |
| 138 | 1.4.5.1 | **تعیین نیازمندی ها** |  | 4d | 2021-02-10 | 2021-02-14 |  | 2021-02-10 | 2021-02-14 | 4d | 45d | 0d |  | 176h | 39,520,000 | 39,520,000 |
| 139 | 1.4.5.1.1 | تعیین نیازمندی های سخت افزار |  | 2d | 2021-02-10 | 2021-02-11 |  | 2021-02-10 | 2021-02-11 | 2d | 45d | 0d | عضو تیم برنامه ریزی و تحقیقات 1; عضو تیم برنامه ریزی و تحقیقات 2; عضو تیم برنامه ریزی و تحقیقات 3; عضو تیم برنامه ریزی و تحقیقات 4; عضو تیم حسابداری 1; مدیر پروژه | 96h | 22,720,000 | 22,720,000 |
| 140 | 1.4.5.1.2 | جلسه با ذی‌نفعان برای شفافیت نیازمندی‌ها‌ |  | 2d | 2021-02-13 | 2021-02-14 | 139 | 2021-02-13 | 2021-02-14 | 2d | 45d |  | عضو تیم برنامه ریزی و تحقیقات 1; عضو تیم برنامه ریزی و تحقیقات 2; عضو تیم برنامه ریزی و تحقیقات 3; عضو تیم برنامه ریزی و تحقیقات 4; عضو تیم حقوقی 2 | 80h | 16,800,000 | 16,800,000 |
| 141 | 1.4.5.2 | بررسی زیر ساخت سخت افزاری موجود |  | 1d | 2021-02-15 | 2021-02-15 | 138 | 2021-02-15 | 2021-02-15 | 1d | 45d | 0d | عضو تیم برنامه ریزی و تحقیقات 1; عضو تیم برنامه ریزی و تحقیقات 2; عضو تیم برنامه ریزی و تحقیقات 3; عضو تیم برنامه ریزی و تحقیقات 4 | 32h | 6,400,000 | 6,400,000 |
| 142 | 1.4.5.3 | جمع آوری سخت افزارهای فعلی برای نصب ماژول های ضروری |  | 1d | 2021-02-16 | 2021-02-16 | 141 | 2021-02-16 | 2021-02-16 | 1d | 51d |  | عضو تیم برنامه ریزی و تحقیقات 1; عضو تیم برنامه ریزی و تحقیقات 2; عضو تیم برنامه ریزی و تحقیقات 3; عضو تیم برنامه ریزی و تحقیقات 4 | 32h | 6,400,000 | 6,400,000 |
| 143 | 1.4.5.4 | تهیه سخت افزارهای جدید |  | 7d | 2021-02-16 | 2021-02-23 | 141 | 2021-02-16 | 2021-02-23 | 7d | 45d | 0d | عضو تیم برنامه ریزی و تحقیقات 1; عضو تیم برنامه ریزی و تحقیقات 2; عضو تیم برنامه ریزی و تحقیقات 3; عضو تیم برنامه ریزی و تحقیقات 4; عضو تیم حسابداری 1; عضو تیم حسابداری 2 | 336h | 69,440,000 | 69,440,000 |
| 144 | 1.4.5.5 | مستند سازی اطلاعات سخت افزارها |  | 2d | 2021-02-24 | 2021-02-25 | 143 | 2021-02-24 | 2021-02-25 | 2d | 45d | 0d | عضو تیم برنامه ریزی و تحقیقات 1; عضو تیم برنامه ریزی و تحقیقات 2; عضو تیم برنامه ریزی و تحقیقات 3; عضو تیم برنامه ریزی و تحقیقات 4 | 64h | 12,800,000 | 12,800,000 |
| 145 | 1.4.5.6 | نهایی سازی و بررسی سخت افزار | milestone | 0d | 2021-02-25 | 2021-02-25 | 144 | 2021-02-25 | 2021-02-25 | 0d | 45d |  | عضو تیم آنالیز 1; عضو تیم آنالیز 2; عضو تیم آنالیز 3; عضو تیم برنامه ریزی و تحقیقات 1; عضو تیم برنامه ریزی و تحقیقات 2; عضو تیم برنامه ریزی و تحقیقات 3; عضو تیم برنامه ریزی و تحقیقات 4 |  |  |  |
| 146 | 1.4.6 | **مرحله deploy کردن** |  | 7d | 2021-04-18 | 2021-04-25 |  | 2021-04-18 | 2021-04-25 | 7d | 0d |  |  | 192h | 31,680,000 | 31,680,000 |
| 147 | 1.4.6.1 | پیاده سازی نرم افزار بر روی سخت افزارهای فعلی |  | 7d | 2021-04-18 | 2021-04-25 | 87, 142 | 2021-04-18 | 2021-04-25 | 7d | 0d |  | عضو تیم back-end 1; عضو تیم front-end 1 | 112h | 18,480,000 | 18,480,000 |
| 148 | 1.4.6.2 | پیاده سازی نرم افزار بر روی سخت افزارهای جدید |  | 5d | 2021-04-18 | 2021-04-22 | 87, 137 | 2021-04-18 | 2021-04-22 | 5d | 2d |  | عضو تیم back-end 1; عضو تیم front-end 1 | 80h | 13,200,000 | 13,200,000 |
| 149 | 1.4.7 | تست ثانویه سیستم |  | 3d | 2021-04-26 | 2021-04-28 | 146 | 2021-04-26 | 2021-04-28 | 3d | 0d |  | عضو تیم آنالیز 1; عضو تیم آنالیز 2; عضو تیم آنالیز 3 | 72h | 11,520,000 | 11,520,000 |
| 150 | 1.4.8 | مستند سازی نتایج |  | 2d | 2021-04-29 | 2021-05-01 | 149 | 2021-04-29 | 2021-05-01 | 2d | 0d |  | عضو تیم آنالیز 1; عضو تیم آنالیز 2; عضو تیم آنالیز 3 | 48h | 7,680,000 | 7,680,000 |
| 151 | 1.4.9 | جلسه با ذی‌نفعان و پایان مرحله پیاده سازی |  | 1d | 2021-05-02 | 2021-05-02 | 150 | 2021-05-02 | 2021-05-02 | 1d | 0d |  | عضو تیم برنامه ریزی و تحقیقات 3; عضو تیم برنامه ریزی و تحقیقات 4; عضو تیم حقوقی 1 | 24h | 5,200,000 | 5,200,000 |
| 152 | 1.4.10 | پایان فاز4 | milestone | 0d | 2021-05-02 | 2021-05-02 | 151 | 2021-05-02 | 2021-05-02 | 0d | 0d |  | عضو تیم آنالیز 1; عضو تیم آنالیز 2; عضو تیم آنالیز 3; عضو تیم برنامه ریزی و تحقیقات 1; عضو تیم برنامه ریزی و تحقیقات 2; عضو تیم برنامه ریزی و تحقیقات 3; عضو تیم برنامه ریزی و تحقیقات 4; مدیر پروژه |  |  |  |
| 153 | 1.5 | **فاز پنجم: راه اندازی** |  | 37d | 2021-05-03 | 2021-06-14 | 84 | 2021-05-03 | 2021-06-14 | 37d | 0d |  |  | 1920h | 337,120,000 | 337,120,000 |
| 154 | 1.5.1 | تهیه User Guide ها |  | 6d | 2021-05-03 | 2021-05-09 |  | 2021-05-03 | 2021-05-09 | 6d | 31d |  | عضو تیم آموزش 1; عضو تیم آموزش 2 | 96h | 14,400,000 | 14,400,000 |
| 155 | 1.5.2 | انجام آموزش های لازم به کارمندان |  | 2d | 2021-05-03 | 2021-05-04 |  | 2021-05-03 | 2021-05-04 | 2d | 35d |  | عضو تیم آموزش 1; عضو تیم آموزش 2 | 32h | 4,800,000 | 4,800,000 |
| 156 | 1.5.3 | مارکتینگ و تبلیغ محصول |  | 30d | 2021-05-03 | 2021-06-06 |  | 2021-05-03 | 2021-06-06 | 30d | 7d |  | عضو تیم آموزش 1; عضو تیم آموزش 2; عضو تیم حسابداری 2; عضو تیم حقوقی 2 | 960h | 184,800,000 | 184,800,000 |
| 157 | 1.5.4 | تست مقبولیت کاربر توسط کاربران نهایی |  | 7d | 2021-05-03 | 2021-05-10 |  | 2021-05-03 | 2021-05-10 | 7d | 0d |  | عضو تیم آنالیز 2; عضو تیم آنالیز 3 | 112h | 17,920,000 | 17,920,000 |

| ID | WBS | Task | Type | Duration | Start | Finish | Predecessors | Baseline start | Baseline finish | Baseline duration | Total slack | Resources | Work | Cost | Baseline cost |
| --- | --- | --- | --- | --- | --- | --- | --- | --- | --- | --- | --- | --- | --- | --- | --- |
| 158 | 1.5.5 | **نظرسنجی و گرفتن فیدبک اولیه** |  | 30d | 2021-05-11 | 2021-06-14 | 157 | 2021-05-11 | 2021-06-14 | 30d | 0d |  | 720h | 115,200,000 | 115,200,000 |
| 159 | 1.5.5.1 | نظرسنجی و گرفتن فیدبک از کارمندان شرکت های هواپیمایی و بیمه |  | 30d | 2021-05-11 | 2021-06-14 |  | 2021-05-11 | 2021-06-14 | 30d | 0d | عضو تیم آنالیز 1; عضو تیم آنالیز 2 | 480h | 76,800,000 | 76,800,000 |
| 160 | 1.5.5.2 | نظرسنجی و گرفتن فیدبک از کاربران نهایی سیستم |  | 30d | 2021-05-11 | 2021-06-14 |  | 2021-05-11 | 2021-06-14 | 30d | 0d | عضو تیم آنالیز 3 | 240h | 38,400,000 | 38,400,000 |
| 161 | 1.5.6 | پایان فاز5 | milestone | 0d | 2021-06-14 | 2021-06-14 | 159, 160 | 2021-06-14 | 2021-06-14 | 0d | 0d | عضو تیم آنالیز 1; عضو تیم برنامه ریزی و تحقیقات 1; عضو تیم برنامه ریزی و تحقیقات 2; مدیر پروژه |  |  |  |
| 162 | 1.6 | **فاز ششم: ارزیابی سیستم** |  | 5d | 2021-06-15 | 2021-06-20 | 153 | 2021-06-15 | 2021-06-20 | 5d | 0d |  | 112h | 17,920,000 | 17,920,000 |
| 163 | 1.6.1 | بررسی مزایای سیستم |  | 4d | 2021-06-15 | 2021-06-19 |  | 2021-06-15 | 2021-06-19 | 4d | 1d | عضو تیم آنالیز 1 | 32h | 5,120,000 | 5,120,000 |
| 164 | 1.6.2 | اندازه‌گیری و آنالیز عملکرد سیستم بر اساس KPI ها |  | 5d | 2021-06-15 | 2021-06-20 |  | 2021-06-15 | 2021-06-20 | 5d | 0d | عضو تیم آنالیز 2; عضو تیم آنالیز 3 | 80h | 12,800,000 | 12,800,000 |
| 165 | 1.6.3 | پایان فاز6 | milestone | 0d | 2021-06-20 | 2021-06-20 | 163, 164 | 2021-06-20 | 2021-06-20 | 0d | 0d | عضو تیم آنالیز 1; عضو تیم آنالیز 2; عضو تیم آنالیز 3; مدیر پروژه |  |  |  |
